# csen_poomsae_score_old

How a schedule from MS Project changed from version to version. A marks actual dates.

## Version 1 (saved 2019-07-15)

Note of the change: Adding Microsoft Project Gantt (optimized and not)

| ID | WBS | Task | Duration | Start | Finish | Predecessors | Total float |
| --- | --- | --- | --- | --- | --- | --- | --- |
| 1 | 1.1 | **Prima release** | 18d | 2019-05-01 | 2019-05-24 |  | 0d |
| 2 |  | Menù Principale | 2d | 2019-05-01 | 2019-05-02 |  | 0d |
| 3 |  | Registrazione Accuratezza | 3d | 2019-05-09 | 2019-05-13 | 2 | 0d |
| 4 |  | Registrazione Presentazione | 4d | 2019-05-03 | 2019-05-08 | 2 | 3d |
| 5 |  | Visualizzazione Riepilogo | 2d | 2019-05-16 | 2019-05-17 | 4, 3 | 0d |
| 6 |  | Gestione Navigazione | 3d | 2019-05-20 | 2019-05-22 | 2, 9 | 2d |
| 7 |  | Invio Punteggio | 3d | 2019-05-22 | 2019-05-24 | 5 | 0d |
| 8 |  | Storico | 2d | 2019-05-17 | 2019-05-21 | 5 | 3d |
| 9 |  | Impostazioni | 2d | 2019-05-14 | 2019-05-15 | 2 | 2d |
| 10 | 1.2 | **Seconda release** | 65.5d | 2019-05-27 | 2019-08-26 | 1 | 0d |
| 11 |  | Menù Principale | 2d | 2019-05-27 | 2019-05-28 |  | 3d |
| 12 |  | Inserimento Anagrafica | 1d | 2019-05-29 | 2019-05-29 | 11 | 5d |
| 13 |  | Parsing da File Excel | 8d | 2019-05-27 | 2019-06-05 |  | 0d |
| 14 |  | Apertura competizione esistente | 3d | 2019-06-06 | 2019-06-10 | 12, 13 | 0d |
| 15 |  | Validazione dei dati importati | 2.5d | 2019-06-11 | 2019-06-13 | 12, 13, 14 | 0d |
| 16 |  | Gestione Atleti | 4d | 2019-06-26 | 2019-08-07 | 15 | 13d |
| 17 |  | Selezione Torneo | 2.5d | 2019-06-13 | 2019-06-17 | 15 | 0d |
| 18 |  | Selezione Atleta | 3d | 2019-06-18 | 2019-06-21 | 17 | 0d |
| 19 |  | Gestione Timer | 2d | 2019-06-21 | 2019-06-28 | 18 | 2.5d |
| 20 |  | Raccolta Punteggi Giudici | 3d | 2019-06-21 | 2019-06-26 | 18, 31 | 0d |
| 21 |  | Raffinamento Punteggio | 1d | 2019-06-26 | 2019-06-27 | 20 | 0d |
| 22 |  | Visualizzazione Risultati | 2d | 2019-07-01 | 2019-07-02 | 21 | 0d |
| 23 |  | Gestione Poomsae Finali | 4d | 2019-07-03 | 2019-07-08 | 18, 19, 20, 21, 22 | 0.5d |
| 24 |  | Gestione Ballottaggi | 5d | 2019-07-30 | 2019-08-05 | 28, 29 | 0.5d |
| 25 |  | Gestione Ritiri ed Eliminazioni | 3d | 2019-08-07 | 2019-08-12 | 18 | 10d |
| 26 |  | Gestione Azzeramenti | 2d | 2019-08-12 | 2019-08-14 | 18 | 8d |
| 27 |  | Gestione Ripetizioni | 2d | 2019-07-01 | 2019-07-02 | 19 | 38.5d |
| 28 |  | Gestione Passaggio Turno | 7d | 2019-07-09 | 2019-07-17 | 23 | 0.5d |
| 29 |  | Gestione Assegnazione Medaglie | 8d | 2019-07-18 | 2019-07-29 | 28 | 0.5d |
| 30 |  | Gestione Salvataggio | 8d | 2019-08-14 | 2019-08-26 | 22 | 0d |
| 31 |  | Impostazioni | 6d | 2019-05-30 | 2019-06-18 | 11 | 3d |
| 32 |  | Monitor Poomsae | 5d | 2019-08-06 | 2019-08-12 | 24 | 0.5d |
| 33 |  | Elenco Atleti | 5d | 2019-08-13 | 2019-08-19 | 32 | 0.5d |
| 34 |  | Classifica Torneo | 4d | 2019-08-20 | 2019-08-23 | 33 | 0.5d |
| 35 | 1.3 | **Terza release** | 53d | 2019-08-26 | 2019-11-07 | 10 | 0d |
| 36 |  | Menù Principale | 2d | 2019-08-26 | 2019-08-28 |  | 0d |
| 37 |  | Spostamento Configurazione Competizione sul Server | 4d | 2019-08-28 | 2019-09-03 | 36 | 0d |
| 38 |  | Gestione Trasferimenti | 9d | 2019-10-10 | 2019-10-23 | 37 | 5d |
| 39 |  | Partizionamento Tornei-Quadrati | 14d | 2019-09-13 | 2019-10-03 | 37, 43, 46 | 0d |
| 40 |  | Raccolta Punteggi e Classifiche Locali | 5d | 2019-10-23 | 2019-10-30 | 39, 48 | 0d |
| 41 |  | Gestione Classifica Globale | 2d | 2019-10-30 | 2019-11-01 | 40 | 2d |
| 42 |  | Gestione Salvataggio | 4d | 2019-11-01 | 2019-11-07 | 38, 40 | 0d |
| 43 |  | Impostazioni | 4d | 2019-09-09 | 2019-09-13 | 36, 46 | 0d |
| 44 |  | Legame Atleta-Quadrato | 4d | 2019-10-30 | 2019-11-07 | 39 | 0d |
| 45 |  | Classifica Globale | 2d | 2019-11-01 | 2019-11-05 | 41 | 2d |
| 46 |  | Rimozione Feature Coperte dal Server | 4d | 2019-09-03 | 2019-09-09 | 37 | 0d |
| 47 |  | Ricezione Tornei | 2d | 2019-10-03 | 2019-10-07 | 46, 39 | 0d |
| 48 |  | Invio Risultati al Server | 3d | 2019-10-07 | 2019-10-10 | 47 | 0d |

## Version 2 (saved 2019-07-16)

Note of the change: Merge branch 'master' of https://github.com/GiacomoFrisoni/PM_CsenPoomsaeScore

Last finish stays 2019-11-07.

Changed:

| ID | Task | Start | Finish | Duration | Total float | Predecessors |
| --- | --- | --- | --- | --- | --- | --- |
| 38 | Gestione Trasferimenti | 2019-10-10 → 2019-09-03 (-37d) | 2019-10-23 → 2019-09-16 (-37d) |  | 5d → 0d |  |
| 39 | Partizionamento Tornei-Quadrati | 2019-09-13 → 2019-09-16 (+3d) | 2019-10-03 → 2019-10-04 (+1d) |  |  | 37, 43, 46 → 37, 38 |
| 40 | Raccolta Punteggi e Classifiche Locali | 2019-10-23 → 2019-10-08 (-15d) | 2019-10-30 → 2019-10-16 (-14d) | 5d → 6.5d | 0d → 2d | 39, 48 → 39, 36 |
| 41 | Gestione Classifica Globale | 2019-10-30 → 2019-10-17 (-13d) | 2019-11-01 → 2019-10-21 (-11d) |  | 2d → 11d |  |
| 42 | Gestione Salvataggio | 2019-11-01 → 2019-10-30 (-2d) | 2019-11-07 → 2019-11-05 (-2d) |  | 0d → 2d |  |
| 43 | Impostazioni | 2019-09-09 → 2019-10-21 (+42d) | 2019-09-13 → 2019-10-29 (+46d) | 4d → 6d | 0d → 7d | 36, 46 → 36 |
| 44 | Legame Atleta-Quadrato | 2019-10-30 → 2019-11-01 (+2d) |  |  |  |  |
| 45 | Classifica Globale | 2019-11-01 → 2019-10-21 (-11d) | 2019-11-05 → 2019-10-23 (-13d) |  | 2d → 11d |  |
| 46 | Rimozione Feature Coperte dal Server | 2019-09-03 → 2019-08-26 (-8d) | 2019-09-09 → 2019-10-09 (+30d) | 4d → 5.5d | 0d → 5d | 37 → none |
| 47 | Ricezione Tornei | 2019-10-03 → 2019-10-15 (+12d) | 2019-10-07 → 2019-10-18 (+11d) | 2d → 3.5d | 0d → 5d | 46, 39 → 46 |
| 48 | Invio Risultati al Server | 2019-10-07 → 2019-10-25 (+18d) | 2019-10-10 → 2019-11-01 (+22d) | 3d → 5d | 0d → 4d |  |
