# csen_poomsae_score_new

How a schedule from MS Project changed from version to version. A marks actual dates.

## Version 1 (saved 2019-07-15)

Note of the change: Adding Microsoft Project Gantt (optimized and not)

| ID | WBS | Task | Duration | Start | Finish | Predecessors | Total float |
| --- | --- | --- | --- | --- | --- | --- | --- |
| 1 | 1.1 | **Prima release** | 16d | 2019-05-01 | 2019-05-22 |  | 0d |
| 2 |  | Menù Principale | 2d | 2019-05-01 | 2019-05-02 |  | 0d |
| 3 |  | Registrazione Accuratezza | 3d | 2019-05-03 | 2019-05-07 | 2 | 3d |
| 4 |  | Registrazione Presentazione | 3d | 2019-05-08 | 2019-05-10 | 2 | 0d |
| 5 |  | Visualizzazione Riepilogo | 2d | 2019-05-13 | 2019-05-14 | 4, 3 | 0d |
| 6 |  | Gestione Navigazione | 3d | 2019-05-15 | 2019-05-17 | 2, 9 | 3d |
| 7 |  | Invio Punteggio | 6d | 2019-05-15 | 2019-05-22 | 5 | 0d |
| 8 |  | Storico | 2d | 2019-05-20 | 2019-05-21 | 5 | 1d |
| 9 |  | Impostazioni | 2d | 2019-05-13 | 2019-05-14 | 2 | 3d |
| 10 | 1.2 | **Seconda release** | 58.5d | 2019-05-23 | 2019-08-13 | 1 | 0d |
| 11 |  | Menù Principale | 2d | 2019-05-23 | 2019-05-24 |  | 5d |
| 12 |  | Inserimento Anagrafica | 1d | 2019-05-27 | 2019-05-27 | 11 | 5d |
| 13 |  | Parsing da File Excel | 8d | 2019-05-23 | 2019-06-03 |  | 0d |
| 14 |  | Apertura competizione esistente | 3d | 2019-06-04 | 2019-06-06 | 12, 13 | 0d |
| 15 |  | Validazione dei dati importati | 2.5d | 2019-06-07 | 2019-06-11 | 12, 13, 14 | 14d |
| 16 |  | Gestione Atleti | 4d | 2019-07-18 | 2019-07-24 | 15 | 14d |
| 17 |  | Selezione Torneo | 2.5d | 2019-06-07 | 2019-06-11 | 14 | 0d |
| 18 |  | Selezione Atleta | 3d | 2019-06-11 | 2019-06-14 | 17 | 0d |
| 19 |  | Gestione Timer | 2d | 2019-06-20 | 2019-06-24 | 18 | 2d |
| 20 |  | Raccolta Punteggi Giudici | 3d | 2019-06-14 | 2019-06-19 | 18, 31 | 0d |
| 21 |  | Raffinamento Punteggio | 1d | 2019-06-19 | 2019-06-20 | 20 | 0d |
| 22 |  | Visualizzazione Risultati | 2d | 2019-06-24 | 2019-06-26 | 21 | 0d |
| 23 |  | Gestione Poomsae Finali | 3d | 2019-06-26 | 2019-07-01 | 18, 19, 20, 21, 22 | 0d |
| 24 |  | Gestione Ballottaggi | 5d | 2019-07-18 | 2019-07-25 | 28, 29 | 0d |
| 25 |  | Gestione Ritiri ed Eliminazioni | 3d | 2019-06-19 | 2019-06-24 | 18 | 36d |
| 26 |  | Gestione Azzeramenti | 2d | 2019-07-25 | 2019-07-29 | 18 | 11d |
| 27 |  | Gestione Ripetizioni | 2d | 2019-06-24 | 2019-06-26 | 19 | 34d |
| 28 |  | Gestione Passaggio Turno | 6d | 2019-07-01 | 2019-07-09 | 23 | 0d |
| 29 |  | Gestione Assegnazione Medaglie | 7d | 2019-07-09 | 2019-07-18 | 28 | 0d |
| 30 |  | Gestione Salvataggio | 8d | 2019-07-29 | 2019-08-08 | 22 | 3d |
| 31 |  | Impostazioni | 5d | 2019-05-28 | 2019-06-03 | 11 | 8.5d |
| 32 |  | Monitor Poomsae | 5d | 2019-07-25 | 2019-08-01 | 24 | 0d |
| 33 |  | Elenco Atleti | 5d | 2019-08-01 | 2019-08-08 | 32 | 0d |
| 34 |  | Classifica Torneo | 3d | 2019-08-08 | 2019-08-13 | 33 | 0d |
| 35 | 1.3 | **Terza release** | 53d | 2019-08-13 | 2019-10-25 | 10 | 0d |
| 36 |  | Menù Principale | 2d | 2019-08-13 | 2019-08-15 |  | 0d |
| 37 |  | Spostamento Configurazione Competizione sul Server | 4d | 2019-08-15 | 2019-08-21 | 36 | 0d |
| 38 |  | Gestione Trasferimenti | 9d | 2019-09-27 | 2019-10-10 | 37 | 5d |
| 39 |  | Partizionamento Tornei-Quadrati | 14d | 2019-09-02 | 2019-09-20 | 37, 43, 46 | 0d |
| 40 |  | Raccolta Punteggi e Classifiche Locali | 5d | 2019-10-10 | 2019-10-17 | 39, 48 | 0d |
| 41 |  | Gestione Classifica Globale | 2d | 2019-10-17 | 2019-10-21 | 40 | 2d |
| 42 |  | Gestione Salvataggio | 4d | 2019-10-21 | 2019-10-25 | 38, 40 | 0d |
| 43 |  | Impostazioni | 4d | 2019-08-27 | 2019-09-02 | 36, 46 | 0d |
| 44 |  | Legame Atleta-Quadrato | 4d | 2019-10-17 | 2019-10-25 | 39 | 0d |
| 45 |  | Classifica Globale | 2d | 2019-10-21 | 2019-10-23 | 41 | 2d |
| 46 |  | Rimozione Feature Coperte dal Server | 4d | 2019-08-21 | 2019-08-27 | 37 | 0d |
| 47 |  | Ricezione Tornei | 2d | 2019-09-20 | 2019-09-24 | 46, 39 | 0d |
| 48 |  | Invio Risultati al Server | 3d | 2019-09-24 | 2019-09-27 | 47 | 0d |

## Version 2 (saved 2019-07-16)

Note of the change: Merge branch 'master' of https://github.com/GiacomoFrisoni/PM_CsenPoomsaeScore

Last finish stays 2019-10-25.

Changed:

| ID | Task | Finish | Duration | Total float |
| --- | --- | --- | --- | --- |
| 8 | Storico | 2019-05-21 → 2019-05-22 (+1d) | 2d → 3d | 1d → 0d |
