# csen_poomsae_score_new

How a schedule from MS Project changed from version to version. A marks actual dates.

## Version 1 (saved 2019-07-16)

Note of the change: Fixing naming (Gantt -> Project Network Diagram)

| ID | WBS | Task | Duration | Start | Finish | Predecessors | Total float | Constraint |
| --- | --- | --- | --- | --- | --- | --- | --- | --- |
| 1 | 1.1 | **Prima release** | 16d | 2019-05-01 | 2019-05-22 |  | 8d |  |
| 2 |  | Menù Principale | 2d | 2019-05-01 | 2019-05-02 |  | 8d |  |
| 3 |  | Registrazione Accuratezza | 3d | 2019-05-03 | 2019-05-07 | 2 | 11d |  |
| 4 |  | Registrazione Presentazione | 3d | 2019-05-08 | 2019-05-10 | 2 | 8d |  |
| 5 |  | Visualizzazione Riepilogo | 2d | 2019-05-13 | 2019-05-14 | 4, 3 | 8d |  |
| 6 |  | Gestione Navigazione | 3d | 2019-05-15 | 2019-05-17 | 2, 9 | 12.5d |  |
| 7 |  | Invio Punteggio | 6d | 2019-05-15 | 2019-05-22 | 5 | 9.5d |  |
| 8 |  | Storico | 3d | 2019-05-20 | 2019-05-22 | 5 | 9.5d |  |
| 9 |  | Impostazioni | 2d | 2019-05-13 | 2019-05-14 | 2 | 12.5d |  |
| 10 | 1.2 | **Seconda release** | 58.5d | 2019-05-23 | 2019-08-13 | 1 | 9.5d |  |
| 11 |  | Menù Principale | 2d | 2019-05-23 | 2019-05-24 |  | 14.5d |  |
| 12 |  | Inserimento Anagrafica | 1d | 2019-05-27 | 2019-05-27 | 11 | 14.5d |  |
| 13 |  | Parsing da File Excel | 8d | 2019-05-23 | 2019-06-03 |  | 9.5d |  |
| 14 |  | Apertura competizione esistente | 3d | 2019-06-04 | 2019-06-06 | 12, 13 | 9.5d |  |
| 15 |  | Validazione dei dati importati | 2.5d | 2019-06-07 | 2019-06-11 | 12, 13, 14 | 23.5d |  |
| 16 |  | Gestione Atleti | 4d | 2019-07-18 | 2019-07-24 | 15 | 23.5d |  |
| 17 |  | Selezione Torneo | 2.5d | 2019-06-07 | 2019-06-11 | 14 | 9.5d |  |
| 18 |  | Selezione Atleta | 3d | 2019-06-11 | 2019-06-14 | 17 | 9.5d |  |
| 19 |  | Gestione Timer | 2d | 2019-06-20 | 2019-06-24 | 18 | 11.5d |  |
| 20 |  | Raccolta Punteggi Giudici | 3d | 2019-06-14 | 2019-06-19 | 18, 31 | 9.5d |  |
| 21 |  | Raffinamento Punteggio | 1d | 2019-06-19 | 2019-06-20 | 20 | 9.5d |  |
| 22 |  | Visualizzazione Risultati | 2d | 2019-06-24 | 2019-06-26 | 21 | 9.5d |  |
| 23 |  | Gestione Poomsae Finali | 3d | 2019-06-26 | 2019-07-01 | 18, 19, 20, 21, 22 | 9.5d |  |
| 24 |  | Gestione Ballottaggi | 5d | 2019-07-18 | 2019-07-25 | 28, 29 | 9.5d |  |
| 25 |  | Gestione Ritiri ed Eliminazioni | 3d | 2019-06-19 | 2019-06-24 | 18 | 45.5d |  |
| 26 |  | Gestione Azzeramenti | 2d | 2019-07-25 | 2019-07-29 | 18 | 20.5d |  |
| 27 |  | Gestione Ripetizioni | 2d | 2019-06-24 | 2019-06-26 | 19 | 43.5d |  |
| 28 |  | Gestione Passaggio Turno | 6d | 2019-07-01 | 2019-07-09 | 23 | 9.5d |  |
| 29 |  | Gestione Assegnazione Medaglie | 7d | 2019-07-09 | 2019-07-18 | 28 | 9.5d |  |
| 30 |  | Gestione Salvataggio | 8d | 2019-07-29 | 2019-08-08 | 22 | 12.5d |  |
| 31 |  | Impostazioni | 5d | 2019-05-28 | 2019-06-03 | 11 | 18d |  |
| 32 |  | Monitor Poomsae | 5d | 2019-07-25 | 2019-08-01 | 24 | 9.5d |  |
| 33 |  | Elenco Atleti | 5d | 2019-08-01 | 2019-08-08 | 32 | 9.5d |  |
| 34 |  | Classifica Torneo | 3d | 2019-08-08 | 2019-08-13 | 33 | 9.5d |  |
| 35 | 1.3 | **Terza release** | 53.5d | 2019-08-13 | 2019-10-25 | 10 | 0d |  |
| 36 |  | Menù Principale | 2d | 2019-08-13 | 2019-08-15 |  | 9.5d |  |
| 37 |  | Spostamento Configurazione Competizione sul Server | 4d | 2019-08-15 | 2019-08-21 | 36 | 9.5d |  |
| 38 |  | Gestione Trasferimenti | 9d | 2019-10-15 | 2019-10-25 | 37 | 0d | start no earlier than 2019-10-15 |
| 39 |  | Partizionamento Tornei-Quadrati | 14d | 2019-09-02 | 2019-09-20 | 37, 43, 46 | 9.5d |  |
| 40 |  | Raccolta Punteggi e Classifiche Locali | 5d | 2019-09-27 | 2019-10-04 | 39, 48 | 9.5d |  |
| 41 |  | Gestione Classifica Globale | 2d | 2019-10-04 | 2019-10-08 | 40 | 11.5d |  |
| 42 |  | Gestione Salvataggio | 4d | 2019-10-08 | 2019-10-14 | 40 | 9.5d |  |
| 43 |  | Impostazioni | 4d | 2019-08-27 | 2019-09-02 | 36, 46 | 9.5d |  |
| 44 |  | Legame Atleta-Quadrato | 4d | 2019-10-04 | 2019-10-14 | 39 | 9.5d |  |
| 45 |  | Classifica Globale | 2d | 2019-10-08 | 2019-10-10 | 41 | 11.5d |  |
| 46 |  | Rimozione Feature Coperte dal Server | 4d | 2019-08-21 | 2019-08-27 | 37 | 9.5d |  |
| 47 |  | Ricezione Tornei | 2d | 2019-09-20 | 2019-09-24 | 46, 39 | 9.5d |  |
| 48 |  | Invio Risultati al Server | 3d | 2019-09-24 | 2019-09-27 | 47 | 9.5d |  |

## Version 2 (saved 2019-07-16)

Note of the change: Updated Microsoft Project files and Gantt images

Last finish stays 2019-10-25.

Changed:

| ID | Task | Start | Duration | Predecessors | Other |
| --- | --- | --- | --- | --- | --- |
| 35 | **Terza release** |  | 53.5d → 53d |  |  |
| 38 | Gestione Trasferimenti | 2019-10-15 → 2019-10-14 (-1d) |  | 37 → 37, 42 | constraint start no earlier than 2019-10-15 → none |

## Version 3 (saved 2019-07-17)

Note of the change: Added scope bank and tests to Project files

Last finish 2019-10-25 → 2019-12-03 (+39d).

Added:

| ID | Task | Duration | Start | Finish | Predecessors | Resources |
| --- | --- | --- | --- | --- | --- | --- |
| 10 | Collaudo | 1d | 2019-05-23 | 2019-05-23 | 1 | Giacomo Frisoni; Marcin Pabich |
| 36 | Collaudo | 3d | 2019-08-14 | 2019-08-19 | 11 | Giacomo Frisoni; Marcin Pabich |
| 51 | Collaudo | 3d | 2019-10-31 | 2019-11-05 | 37 | Giacomo Frisoni; Marcin Pabich |
| 52 | Scope Bank | 20d | 2019-11-05 | 2019-12-03 | 51 |  |

Changed:

| ID | Task | Start | Finish | Duration | Total float | Predecessors |
| --- | --- | --- | --- | --- | --- | --- |
| 11 | **Seconda release** | 2019-05-23 → 2019-05-24 (+1d) | 2019-08-13 → 2019-08-14 (+1d) |  |  | 1 → 10 |
| 12 | Menù Principale | 2019-05-23 → 2019-05-24 (+1d) | 2019-05-24 → 2019-05-27 (+3d) |  |  |  |
| 13 | Inserimento Anagrafica | 2019-05-27 → 2019-05-28 (+1d) | 2019-05-27 → 2019-05-28 (+1d) |  |  |  |
| 14 | Parsing da File Excel | 2019-05-23 → 2019-05-24 (+1d) | 2019-06-03 → 2019-06-04 (+1d) |  |  |  |
| 15 | Apertura competizione esistente | 2019-06-04 → 2019-06-05 (+1d) | 2019-06-06 → 2019-06-07 (+1d) |  |  |  |
| 16 | Validazione dei dati importati | 2019-06-07 → 2019-06-10 (+3d) | 2019-06-11 → 2019-06-12 (+1d) |  |  |  |
| 17 | Gestione Atleti | 2019-07-18 → 2019-07-19 (+1d) | 2019-07-24 → 2019-07-25 (+1d) |  | 23.5d → 14d |  |
| 18 | Selezione Torneo | 2019-06-07 → 2019-06-10 (+3d) | 2019-06-11 → 2019-06-12 (+1d) |  |  |  |
| 19 | Selezione Atleta | 2019-06-11 → 2019-06-12 (+1d) | 2019-06-14 → 2019-06-17 (+3d) |  |  |  |
| 20 | Gestione Timer | 2019-06-20 → 2019-06-21 (+1d) | 2019-06-24 → 2019-06-25 (+1d) |  |  |  |
| 21 | Raccolta Punteggi Giudici | 2019-06-14 → 2019-06-17 (+3d) | 2019-06-19 → 2019-06-20 (+1d) |  |  |  |
| 22 | Raffinamento Punteggio | 2019-06-19 → 2019-06-20 (+1d) | 2019-06-20 → 2019-06-21 (+1d) |  |  |  |
| 23 | Visualizzazione Risultati | 2019-06-24 → 2019-06-25 (+1d) | 2019-06-26 → 2019-06-27 (+1d) |  |  |  |
| 24 | Gestione Poomsae Finali | 2019-06-26 → 2019-06-27 (+1d) | 2019-07-01 → 2019-07-02 (+1d) |  |  |  |
| 25 | Gestione Ballottaggi | 2019-07-18 → 2019-07-19 (+1d) | 2019-07-25 → 2019-07-26 (+1d) |  |  |  |
| 26 | Gestione Ritiri ed Eliminazioni | 2019-06-19 → 2019-06-20 (+1d) | 2019-06-24 → 2019-06-25 (+1d) |  | 45.5d → 36d |  |
| 27 | Gestione Azzeramenti | 2019-07-25 → 2019-07-26 (+1d) | 2019-07-29 → 2019-07-30 (+1d) |  | 20.5d → 11d |  |
| 28 | Gestione Ripetizioni | 2019-06-24 → 2019-06-25 (+1d) | 2019-06-26 → 2019-06-27 (+1d) |  | 43.5d → 34d |  |
| 29 | Gestione Passaggio Turno | 2019-07-01 → 2019-07-02 (+1d) | 2019-07-09 → 2019-07-10 (+1d) |  |  |  |
| 30 | Gestione Assegnazione Medaglie | 2019-07-09 → 2019-07-10 (+1d) | 2019-07-18 → 2019-07-19 (+1d) |  |  |  |
| 31 | Gestione Salvataggio | 2019-07-29 → 2019-07-30 (+1d) | 2019-08-08 → 2019-08-09 (+1d) |  | 12.5d → 3d |  |
| 32 | Impostazioni | 2019-05-28 → 2019-05-29 (+1d) | 2019-06-03 → 2019-06-04 (+1d) |  | 18d → 8.5d |  |
| 33 | Monitor Poomsae | 2019-07-25 → 2019-07-26 (+1d) | 2019-08-01 → 2019-08-02 (+1d) |  |  |  |
| 34 | Elenco Atleti | 2019-08-01 → 2019-08-02 (+1d) | 2019-08-08 → 2019-08-09 (+1d) |  |  |  |
| 35 | Classifica Torneo | 2019-08-08 → 2019-08-09 (+1d) | 2019-08-13 → 2019-08-14 (+1d) |  |  |  |
| 37 | **Terza release** | 2019-08-13 → 2019-08-19 (+6d) | 2019-10-25 → 2019-10-31 (+6d) |  |  | 11 → 36 |
| 38 | Menù Principale | 2019-08-13 → 2019-08-19 (+6d) | 2019-08-15 → 2019-08-21 (+6d) |  |  |  |
| 39 | Spostamento Configurazione Competizione sul Server | 2019-08-15 → 2019-08-21 (+6d) | 2019-08-21 → 2019-08-27 (+6d) |  |  |  |
| 40 | Gestione Trasferimenti | 2019-10-14 → 2019-10-16 (+2d) | 2019-10-25 → 2019-10-31 (+6d) | 9d → 11d |  |  |
| 41 | Partizionamento Tornei-Quadrati | 2019-09-02 → 2019-09-06 (+4d) | 2019-09-20 → 2019-09-26 (+6d) |  |  |  |
| 42 | Raccolta Punteggi e Classifiche Locali | 2019-09-27 → 2019-10-03 (+6d) | 2019-10-04 → 2019-10-10 (+6d) |  |  |  |
| 43 | Gestione Classifica Globale | 2019-10-04 → 2019-10-16 (+12d) | 2019-10-08 → 2019-10-18 (+10d) |  | 11.5d → 7d |  |
| 44 | Gestione Salvataggio | 2019-10-08 → 2019-10-10 (+2d) | 2019-10-14 → 2019-10-16 (+2d) |  |  |  |
| 45 | Impostazioni | 2019-08-27 → 2019-09-02 (+6d) | 2019-09-02 → 2019-09-06 (+4d) |  |  |  |
| 46 | Legame Atleta-Quadrato | 2019-10-04 → 2019-10-10 (+6d) | 2019-10-14 → 2019-10-16 (+2d) |  | 9d → 11d |  |
| 47 | Classifica Globale | 2019-10-08 → 2019-10-18 (+10d) | 2019-10-10 → 2019-10-22 (+12d) |  | 11.5d → 7d |  |
| 48 | Rimozione Feature Coperte dal Server | 2019-08-21 → 2019-08-27 (+6d) | 2019-08-27 → 2019-09-02 (+6d) |  |  |  |
| 49 | Ricezione Tornei | 2019-09-20 → 2019-09-26 (+6d) | 2019-09-24 → 2019-09-30 (+6d) |  |  |  |
| 50 | Invio Risultati al Server | 2019-09-24 → 2019-09-30 (+6d) | 2019-09-27 → 2019-10-03 (+6d) |  |  |  |
